Schedule from MS Project, 2018-09-19 to 2019-01-13, status date 2018-10-10, 2 hours a day, A marks actual dates.

## Calendars

- 七天工作日: Mon 20:00-22:00; Tue-Wed 20:00-23:00; Thu 08:00-12:00, 13:00-17:00; Fri 20:00-22:00; Sat-Sun 13:00-16:00, 18:00-20:00. Exceptions (off unless hours are given): 2018-09-22 to 2018-09-24 (中秋), 2018-10-02 to 2018-10-07 (国庆), 2018-10-10 to 2019-01-12 17:00-19:00 (绩效考评, recurring), 2018-10-10 to 2020-01-12 11:30-13:00 (小组会议, recurring), 2018-10-21 to 2018-10-22 15:00-18:00 (非正式会谈), 2018-12-05 16:00-17:00 (非正式会谈).

## Resources

| Resource |
| --- |
| 程 |
| 陈 |
| 邓 |
| 诸葛 |
| 庄 |

## Schedule

| ID | WBS | Task | Type | Duration | Start | Finish | Predecessors | Complete | Remaining | Total slack | Resources | Work | Actual work | 负责人 | 说明 | 输入 | 输出 |
| --- | --- | --- | --- | --- | --- | --- | --- | --- | --- | --- | --- | --- | --- | --- | --- | --- | --- |
| 1 | 1 | **软件工程系列课程教学辅助网站需求工程计划** |  | 203.75d | 2018-09-19 A | 2019-01-12 |  | 67% | 66.34d |  |  | 576h | 305.5h |  |  |  |  |
| 2 | 1.1 | **知识准备——UML翻转** |  | 55.5d | 2018-10-12 A | 2018-11-10 A |  | 100% |  |  |  | 52h | 52h |  |  |  |  |
| 3 | 1.1.1 | 寻找PPT模板 | manual | 2.5d | 2018-10-12 A | 2018-10-13 A |  | 100% |  |  | 陈 | 2h | 2h | 陈伟峰 | UML翻转前确定使用的PPT模板 | 寻找PPT模板 | PPT模板 |
| 4 | 1.1.2 | UML概述材料 | manual | 2.25d | 2018-10-12 A | 2018-10-13 A |  | 100% |  |  | 诸葛; 邓 | 5h | 5h | 诸葛志相 | UML翻转前确定使用的材料 | 寻找概述材料 | UML概述材料 |
| 5 | 1.1.3 | UML概论ppt制作 | manual | 1d | 2018-10-14 A | 2018-10-14 A | 3, 4 | 100% |  |  | 陈; 程; 邓; 诸葛; 庄 | 5h | 5h | 诸葛志相 | UML概述评审PPT的制作 | UML概述材料 | UML评审PPT |
| 6 | 1.1.4 | UML概述修改 | manual | 1d | 2018-10-15 A | 2018-10-15 A | 5 | 100% |  |  | 邓; 诸葛 | 1h | 1h | 诸葛志相 | UML评审PPT的更新 | UML评审PPT | UML评审PPT更新 |
| 7 | 1.1.5 | UML概述修改 | manual | 0.25d | 2018-10-15 A | 2018-10-15 A | 6 | 100% |  |  | 陈; 庄 | 2h | 2h | 陈伟峰 | UML评审PPT的更新 | UML评审PPT | UML评审PPT更新 |
| 8 | 1.1.6 | UML概论评审 | manual | 1d | 2018-10-19 A | 2018-10-19 A | 7 | 100% |  |  | 庄 | 1h | 1h | 庄毓勋 | UML概述PPT评审 | UML评审PPT |  |
| 9 | 1.1.7 | UML工具ppt制作 | manual | 1d | 2018-10-21 A | 2018-10-21 A | 8, 3 | 100% |  |  | 陈; 程; 邓; 诸葛; 庄 | 5h | 5h | 诸葛志相 | UML工具PPT制作 | 寻找UML工具材料 | UML工具PPT |
| 10 | 1.1.8 | UML工具ppt修改 | manual | 1d | 2018-10-22 A | 2018-10-22 A | 9 | 100% |  |  | 程; 邓 | 2h | 2h | 程天柯 | UML工具PPT更新 | UML工具PPT | UML工具PPT更新 |
| 11 | 1.1.9 | UML工具ppt修改 | manual | 1d | 2018-10-23 A | 2018-10-23 A | 10 | 100% |  |  | 陈; 诸葛 | 2h | 2h | 陈伟峰 | UML工具PPT更新 | UML工具PPT | UML工具PPT更新 |
| 12 | 1.1.10 | UML工具ppt评审 | manual | 1d | 2018-10-24 A | 2018-10-24 A | 11 | 100% |  |  | 庄 | 1h | 1h | 庄毓勋 | UML工具PPT评审 | UML工具PPT评审 |  |
| 13 | 1.1.11 | UML基础1的ppt材料制作 | manual | 1d | 2018-10-27 A | 2018-10-27 A | 3, 12 | 100% |  |  | 陈; 程; 邓; 诸葛; 庄 | 5h | 5h | 诸葛志相 | UML基础1PPT制作 | UML基础1材料 | UML基础1PPT |
| 14 | 1.1.12 | UML基础1:ppt修改 | manual | 1d | 2018-10-28 A | 2018-10-28 A | 13 | 100% |  |  | 邓; 诸葛 | 2h | 2h | 邓晰 | 更新UML基础1PPT | UML基础1PPT | 更新UML基础1PPT |
| 15 | 1.1.13 | UML基础1:ppt修改 | manual | 1d | 2018-10-30 A | 2018-10-30 A | 14 | 100% |  |  | 陈; 程 | 2h | 2h | 陈伟峰 | 更新UML基础1PPT | UML基础1PPT | 更新UML基础1PPT |
| 16 | 1.1.14 | UML基础1评审 | manual | 0.5d | 2018-10-31 A | 2018-10-31 A | 15 | 100% |  |  | 程 | 1h | 1h | 程天柯 | UML基础1PPT评审 | UML基础1PPT评审 |  |
| 17 | 1.1.15 | UML基础2的ppt材料制作 | manual | 1d | 2018-11-01 A | 2018-11-01 A | 3, 16 | 100% |  |  | 陈; 程; 邓; 诸葛; 庄 | 5h | 5h | 诸葛志相 | UML2基础PPT | 寻找UML基础2PPT材料 | UML2基础PPT |
| 18 | 1.1.16 | UML基础2:ppt修改 | manual | 1d | 2018-11-03 A | 2018-11-03 A | 17 | 100% |  |  | 陈; 程; 邓; 诸葛; 庄 | 4h | 4h | 陈伟峰 | 更新UML基础2PPT | UML基础2PPT | 更新UML基础2PPT |
| 19 | 1.1.17 | UML基础2:ppt修改 | manual | 1.5d | 2018-11-04 A | 2018-11-04 A | 18 | 100% |  |  | 陈; 程 | 2h | 2h | 陈伟峰 | 更新UML基础2PPT | UML基础2PPT | 更新UML基础2PPT |
| 20 | 1.1.18 | UML基础2:ppt修改 | manual | 1.5d | 2018-11-05 A | 2018-11-05 A | 19 | 100% |  |  | 邓; 诸葛 | 2h | 2h | 邓晰 | 更新UML基础2PPT | UML基础2PPT | 更新UML基础2PPT |
| 21 | 1.1.19 | UML基础2:ppt修改 | manual | 1d | 2018-11-06 A | 2018-11-06 A | 20 | 100% |  |  | 庄 | 1h | 1h | 庄毓勋 | 更新UML基础2PPT | UML基础2PPT | 更新UML基础2PPT |
| 22 | 1.1.20 | UML基础2:评审 | manual | 1d | 2018-11-10 A | 2018-11-10 A | 21 | 100% |  |  | 邓 | 2h | 2h | 邓晰 |  | UML基础2PPT评审 |  |
| 23 | 1.2 | **项目启动** |  | 73d | 2018-09-19 A | 2018-11-04 |  | 94% | 4.42d | 0d |  | 31h | 30h |  |  |  |  |
| 24 | 1.2.1 | 召开会议启动计划 | manual | 1d | 2018-09-19 A | 2018-09-19 A |  | 100% |  |  | 陈; 程; 邓; 诸葛; 庄 | 5h | 5h | 诸葛志相 | 在第一节课上正式开始启动项目会议 |  | 第一次会议记录 |
| 25 | 1.2.2 | 软件资源配置 | manual | 2.5d | 2018-09-20 A | 2018-09-21 A | 24 | 100% |  |  | 陈; 邓 | 5h | 5h | 邓晰 | 邓晰对项目结构进行初步配置管理并且记录 |  | 配置记录表 |
| 26 | 1.2.3 | 识别干系人 | manual | 1d | 2018-09-20 A | 2018-09-20 A | 24 | 100% |  |  | 诸葛 | 1h | 1h | 诸葛志相 | 对项目的干系人进行初步识别 |  | 干系人表 |
| 27 | 1.2.4 | 编写资源日历 | manual | 1d | 2018-09-20 | 2018-09-20 | 24 |  |  |  | 庄 | 1h |  | 庄毓勋 |  | 每个人的课表 | 资源日历 |

| ID | WBS | Task | Type | Duration | Start | Finish | Predecessors | Complete | Remaining | Actual start | Actual finish | Total slack | Resources | Work | Actual work | 负责人 | 说明 | 输入 | 输出 |
| --- | --- | --- | --- | --- | --- | --- | --- | --- | --- | --- | --- | --- | --- | --- | --- | --- | --- | --- | --- |
| 28 | 1.2.5 | **起草可行分析报告** |  | 13.25d | 2018-10-07 | 2018-10-13 A | 24, 25 | 100% |  | 2018-10-08 |  |  |  | 16h | 16h |  |  |  |  |
| 29 | 1.2.5.1 | 市场分析可行性初步 | manual | 1d | 2018-10-08 A | 2018-10-08 A | 24 | 100% |  |  |  |  | 庄 | 2h | 2h | 庄毓勋 | 分析市场存在的产品 | 市场材料 | 市场可行性初步计划 |
| 30 | 1.2.5.2 | 操作可行性初步 | manual | 1d | 2018-10-08 A | 2018-10-08 A | 24 | 100% |  |  |  |  | 程 | 2h | 2h | 程天柯 | 分析该项目的是否可操作性 | 操作可行性材料 | 操作可行性初步计划 |
| 31 | 1.2.5.3 | 法律可行性初步 | manual | 1d | 2018-10-09 A | 2018-10-09 A |  | 100% |  |  |  |  | 邓 | 2h | 2h | 邓晰 | 分析在法律层面上的可行性 | 法律可行性材料 | 法律可行性初步计划 |
| 32 | 1.2.5.4 | 经济可行性初步 | manual | 3.5d | 2018-10-11 A | 2018-10-12 A |  | 100% |  |  |  |  | 邓 | 2h | 2h | 邓晰 | 分析经济上的可行性 | 经济可行性材料 | 经济可行性初步计划 |
| 33 | 1.2.5.5 | 时间和资源可行性初步 | manual | 0.5d | 2018-10-08 A | 2018-10-08 A | 24 | 100% |  |  |  |  | 诸葛 | 2h | 2h | 诸葛志相 | 分析时间和资源上是否可行 | 校历，配置表 | 时间和资源可行性初步计划 |
| 34 | 1.2.5.6 | SWOT分析初步 | manual | 1d | 2018-10-12 A | 2018-10-12 A | 26 | 100% |  |  |  |  | 庄 | 1h | 1h | 庄毓勋 | 分析团队的优势和劣势 | 以上可行性初步计划 | SWOT分析表 |
| 35 | 1.2.5.7 | 项目风险 | manual | 1d | 2018-10-10 A | 2018-10-10 A |  | 100% |  |  |  |  | 程 | 2h | 2h | 程天柯 | 初步分析项目的风险 | C2-PRD-项目描述 | 基础风险表 |
| 36 | 1.2.5.8 | 文档整合 | manual | 1d | 2018-10-13 A | 2018-10-13 A | 29, 30, 31, 32, 33, 34, 35 | 100% |  |  |  |  | 庄 | 3h | 3h | 庄毓勋 | 可行性分析报告起草 | 以上初步计划以及SWOT | 可行性分析报告初步 |
| 37 | 1.2.6 | logo设计 | manual | 1d | 2018-11-04 A | 2018-11-04 A | 24 | 100% |  |  |  |  | 庄 | 3h | 3h | 庄毓勋 |  | Logo素材 | 队伍Logo设计 |
| 38 | 1.3 | **项目计划** |  | 125.5d | 2018-09-27 A | 2018-12-09 | 23 | 83% | 21.08d |  |  | 0d |  | 133.5h | 128.5h |  |  |  |  |
| 39 | 1.3.1 | 寻找并选择文档模板 | manual | 1d | 2018-09-27 A | 2018-09-27 A | 37, 28 | 100% |  |  |  |  | 庄 | 2h | 2h | 庄毓勋 | 寻找项目使用模板 |  | GB模板 |
| 40 | 1.3.2 | 起草项目章程 | manual | 1d | 2018-09-27 A | 2018-09-27 A | 28, 33, 35, 24, 37, 39 | 100% |  |  |  |  | 诸葛 | 2h | 2h | 诸葛志相 | 起草项目章程 | C2-PRD-项目描述 | 项目章程起草 |
| 41 | 1.3.3 | **起草开发计划书** |  | 16.25d | 2018-09-27 | 2018-10-10 |  | 45% | 8.96d | 2018-09-28 |  |  |  | 17h | 14h |  |  |  |  |
| 42 | 1.3.3.1 | 初步绘制甘特图 | manual | 1d | 2018-09-28 A | 2018-09-28 A | 33, 40, 24 | 100% |  |  |  |  | 诸葛; 程; 庄 | 4h | 4h | 诸葛志相 | 根据WBS图画甘特图 | WBS图 | 甘特图 |
| 43 | 1.3.3.2 | 子计划初步编写 | manual | 0.4d | 2018-09-30 A | 2018-09-30 A | 25, 33, 35 | 100% |  |  |  |  | 陈; 程; 邓; 诸葛; 庄 | 5h | 5h | 诸葛志相 | 根据项目设计给出初步子计划 | C2-PRD-项目设计 | 子计划初步 |
| 44 | 1.3.3.3 | OBS图 | manual | 1.5d | 2018-10-08 A | 2018-10-09 A | 26 | 100% |  |  |  |  | 陈 | 2h | 2h | 陈伟峰 | 根据干系人画OBS图 | 干系人表 | OBS图V0.1.0 |
| 45 | 1.3.3.4 | WBS图 | manual | 8.25d | 2018-10-09 A | 2018-10-12 | 33 | 12% | 7.25d |  |  |  | 程 | 4h | 1h | 程天柯 | 根据IT项目管理画WBS图 | 《IT项目管理》 | WBSV0.1.0 |
| 46 | 1.3.3.5 | 设置预算 | manual | 1d | 2018-10-13 A | 2018-10-14 A | 32 | 100% |  |  |  |  | 诸葛 | 1h | 1h | 诸葛志相 |  | 经济可行性初步计划 | 预算表 |
| 47 | 1.3.3.6 | 文档的汇总与编写 | manual | 1d | 2018-10-09 A | 2018-10-09 A | 42, 43, 44, 45 | 100% |  |  |  |  | 庄 | 1h | 1h | 庄毓勋 | 项目开发按计划书起草 | 开发计划书材料 | 项目开发计划书V0.1.0 |
| 48 | 1.3.4 | 更新开发计划书 | manual | 1d | 2018-10-14 A | 2018-10-14 A | 41, 25 | 100% |  |  |  |  | 庄; 邓 | 3h | 3h | 庄毓勋 | 排版、修改配置管理计划 | 项目开发计划书V0.1.1 | 项目开发计划书V0.1.2 |
| 49 | 1.3.5 | 更新开发计划书 | manual | 1d | 2018-10-21 A | 2018-10-21 A | 48, 43 | 100% |  |  |  |  | 庄; 邓 | 3h | 3h | 邓晰 | 修改需求、修改子计划 | 项目开发计划书V0.1.2 | 项目开发计划书V0.1.3 |
| 50 | 1.3.6 | **起草需求工程计划** |  | 14.25d | 2018-10-15 | 2018-10-21 |  | 100% |  | 2018-10-14 | 2018-10-20 |  |  | 23h | 23h |  |  |  |  |
| 51 | 1.3.6.1 | 项目概述 | manual | 2d | 2018-10-15 A | 2018-10-16 A | 28, 49, 40 | 100% |  |  |  |  | 诸葛; 邓 | 5h | 5h | 诸葛志相 | 编写项目背景，项目要求等内容 | 项目章程，项目开发计划书，可行性分析报告 | 项目概述 |
| 52 | 1.3.6.2 | 项目人力资源管理初步 | manual | 2.5d | 2018-10-16 A | 2018-10-17 A | 44 | 100% |  |  |  |  | 陈 | 2h | 2h | 陈伟峰 | 初步编写人力资源管理计划 | OBS图V0.1.0 | 人力资源管理计划初步 |
| 53 | 1.3.6.3 | 项目风险管理初步 | manual | 2.5d | 2018-10-16 A | 2018-10-17 A | 35 | 100% |  |  |  |  | 庄 | 2h | 2h | 庄毓勋 | 初步编写项目风险管理计划初步 | 基础风险表 | 项目风险管理计划初步 |
| 54 | 1.3.6.4 | 项目范围管理初步 | manual | 2.5d | 2018-10-16 A | 2018-10-17 A | 44, 24, 41 | 100% |  |  |  |  | 程 | 2h | 2h | 程天柯 | 初步编写项目范围管理计划初步 | WBS图 | 项目范围管理计划初步 |
| 55 | 1.3.6.5 | 项目配置管理初步 | manual | 1d | 2018-10-18 A | 2018-10-18 A | 25 | 100% |  |  |  |  | 诸葛 | 2h | 2h | 诸葛志相 | 初步编写项目配置管理计划初步 | 配置记录表 | 项目配置管理计划初步 |
| 56 | 1.3.6.6 | 项目质量管理初步 | manual | 3.5d | 2018-10-18 A | 2018-10-19 A | 40, 49 | 100% |  |  |  |  | 邓 | 2h | 2h | 邓晰 | 初步编写项目质量管理计划初步 | 质量管理计划 | 项目质量管理计划初步 |
| 57 | 1.3.6.7 | 项目沟通管理初步 | manual | 4d | 2018-10-18 A | 2018-10-19 A | 27 | 100% |  |  |  |  | 邓 | 2h | 2h | 邓晰 | 初步编写项目沟通管理计划初步 | 资源日历 | 项目沟通管理计划初步 |
| 58 | 1.3.6.8 | 项目采购管理初步 | milestone, manual | 0d | 2018-10-18 A | 2018-10-18 A | 29 | 100% |  |  |  |  | 陈 |  |  | 陈伟峰 | 初步编写项目采购管理计划初步 | 采购表单 | 项目采购管理计划初步 |
| 59 | 1.3.6.9 | 项目成本管理初步 | manual | 1d | 2018-10-14 A | 2018-10-15 A | 46 | 100% |  |  |  |  | 诸葛 | 3h | 3h | 诸葛志相 | 初步编写项目成本管理计划 | 预算表 | 成本详细预算表，项目成本管理计划初步 |
| 60 | 1.3.6.10 | 整合文档以及编写其他内容 | manual | 0.5d | 2018-10-20 A | 2018-10-20 A | 52, 53, 54, 55, 56, 57, 58 | 100% |  |  |  |  | 庄 | 3h | 3h | 庄毓勋 | 需求工程计划起草 | 前面所有的需求工程有关的内容 | 需求工程计划V0.1.0 |
| 61 | 1.3.7 | 更新需求工程计划 | manual | 1d | 2018-10-28 A | 2018-10-28 A | 50 | 100% |  |  |  |  | 邓 | 2h | 2h | 邓晰 | 修改例会时间，添加采购管理子计划 | 需求开发计划V0.1.1 | 需求开发计划V0.1.2 |
| 62 | 1.3.8 | 更新开发计划书 | manual | 1d | 2018-10-28 A | 2018-10-28 A | 49, 57 | 100% |  |  |  |  | 邓 | 2h | 2h | 邓晰 | 修改例会时间 | 项目开发计划书V0.1.3 | 项目开发计划书V0.1.4 |
| 63 | 1.3.9 | 更新需求工程计划 | manual | 1d | 2018-11-04 A | 2018-11-04 A | 50, 53 | 100% |  |  |  |  | 陈; 程; 庄 | 2h | 2h | 陈伟峰 | 修改风险项，修改WBS，修改模板 | 需求开发计划V0.1.2 | 需求开发计划V0.1.3 |
| 64 | 1.3.10 | 更新开发计划书 | manual | 1d | 2018-11-04 A | 2018-11-04 A | 62 | 100% |  |  |  |  | 程; 邓; 庄 | 2h | 2h | 庄毓勋 | 修改模板、修改WBS、修改风险 | 项目开发计划书V0.1.4 | 项目开发计划书V0.2.0 |
| 65 | 1.3.11 | 更新可行性分析报告 | manual | 1d | 2018-11-11 A | 2018-11-11 A | 28, 35, 29 | 100% |  |  |  |  | 庄 | 2h | 2h | 庄毓勋 | 修改市场分析，SWOT分析，政策分析，竞争实力分析，技术可行性分析，时间和资源可行性分析，知识产权可行性分析。 | 可行性报告V0.1.0 | 可行性报告V0.1.1 |
| 66 | 1.3.12 | 更新需求工程计划 | manual | 1d | 2018-11-11 A | 2018-11-11 A | 63, 56, 57 | 100% |  |  |  |  | 陈; 邓; 庄 | 1h | 1h | 邓晰 | 修改质量管理子计划、沟通管理子计划、配置管理子计划、项目干系人、人力资源计划、风险子计划 | 需求开发计划V0.1.3 | 需求开发计划V0.1.4 |
| 67 | 1.3.13 | 更新开发计划书 | manual | 1d | 2018-11-11 A | 2018-11-11 A | 64, 55 | 100% |  |  |  |  | 陈; 邓 | 1h | 1h | 陈伟峰 | 修改质量管理子计划、配置管理子计划、沟通管理子计划、项目干系人、人力资源管理计划 | 项目开发计划书V0.2.0 | 项目开发计划书V0.2.1 |
| 68 | 1.3.14 | 寻找ISO9001模板 | manual | 1d | 2018-09-28 A | 2018-09-28 A | 39 | 100% |  |  |  |  | 庄 | 2h | 2h | 庄毓勋 | 把国标模板更改为ISO9001模板 |  | ISO9001模板 |
| 69 | 1.3.15 | 更新项目章程 | manual | 1d | 2018-11-20 A | 2018-11-20 A | 40, 68 | 100% |  |  |  |  | 诸葛 | 1h | 1h | 诸葛志相 | 修改模板 | 项目章程V0.1.1 | 项目章程V0.1.2 |
| 70 | 1.3.16 | 更新可行性分析报告 | manual | 1d | 2018-11-20 A | 2018-11-20 A | 65, 68 | 100% |  |  |  |  | 邓 | 1h | 1h | 邓晰 | 修改模板 | 可行性报告V0.1.1 | 可行性报告V0.1.2 |
| 71 | 1.3.17 | 更新需求工程计划 | manual | 1d | 2018-11-20 A | 2018-11-20 A | 66, 68 | 100% |  |  |  |  | 庄 | 2h | 2h | 庄毓勋 | 修改软件工程计划模板，更新其他的子计划等。 | 需求开发计划V0.1.4 | 需求开发计划V0.2.1 |
| 72 | 1.3.18 | 更新开发计划书 | manual | 1d | 2018-11-20 A | 2018-11-20 A | 67, 68 | 100% |  |  |  |  | 庄 | 1h | 1h | 庄毓勋 | 修改内容和模板 | 项目开发计划书V0.2.1 | 项目开发计划书V0.2.2 |
| 73 | 1.3.19 | 更新项目章程 | manual | 7.5d | 2018-11-21 A | 2018-11-22 | 69, 68 | 13% | 6.5d |  |  |  | 程 | 2h | 1h | 程天柯 | 修改模板 | 项目章程V0.1.2 | 项目章程V0.1.3 |
| 74 | 1.3.20 | 更新可行性分析报告 | manual | 1d | 2018-11-21 A | 2018-11-21 A | 70, 68 | 100% |  |  |  |  | 庄 | 0.5h | 0.5h | 庄毓勋 | 修改模板和内容 | 可行性报告V0.1.2 | 可行性报告V0.1.3 |
| 75 | 1.3.21 | 更新可行性分析报告 | manual | 1d | 2018-11-24 A | 2018-11-24 A | 74, 68 | 100% |  |  |  |  | 庄 | 1h | 1h | 庄毓勋 | 修改操作可行性，经济可行性。 | 可行性报告V0.1.3 | 可行性报告V0.1.4 |
| 76 | 1.3.22 | 更新需求工程计划 | manual | 1d | 2018-11-25 A | 2018-11-25 A | 71, 56 | 100% |  |  |  |  | 邓; 庄 | 2h | 2h | 邓晰 | 修改质量管理计划，配置管理计划。 | 需求开发计划V0.2.1 | 需求开发计划V0.2.2 |
| 77 | 1.3.23 | 更新需求工程计划 | manual | 1d | 2018-11-27 A | 2018-11-27 A | 76, 55 | 100% |  |  |  |  | 程; 诸葛 | 1h | 1h | 诸葛志相 | 更新了成本管理计划、范围管理计划 | 需求开发计划V0.2.2 | 需求开发计划V0.2.3 |
| 78 | 1.3.24 | 更新开发计划书 | manual | 1d | 2018-11-27 A | 2018-11-27 A | 59, 72 | 100% |  |  |  |  | 诸葛 | 2h | 2h | 诸葛志相 | 更新了成本 | 项目开发计划书V0.2.2 | 项目开发计划书V0.2.3 |
| 79 | 1.3.25 | 更新需求工程计划 | manual | 1d | 2018-11-29 A | 2018-11-29 A | 77, 52 | 100% |  |  |  |  | 庄 | 1h | 1h | 庄毓勋 | 修改干系人管理计划和配置管理计划 | 需求开发计划V0.2.3 | 需求开发计划V0.2.4 |
| 80 | 1.3.26 | 更新需求工程计划 | manual | 1d | 2018-11-29 A | 2018-11-29 A | 44, 79 | 100% |  |  |  |  | 陈 | 2h | 2h | 陈伟峰 | 修改OBS图 | 需求开发计划V0.2.4 | 需求开发计划V0.3.1 |
| 81 | 1.3.27 | 关于组内项目经理更换的重大抉择 | manual | 1d | 2018-11-30 A | 2018-11-30 A | 154, 155 | 100% |  |  |  |  | 陈; 程; 邓; 诸葛; 庄 | 1h | 1h |  | 最终决定替换项目经理为庄毓勋 | 召开组内临时会议 | PRD-G14-11-30临时会议记录 |
| 82 | 1.3.28 | 更新WBS图 | manual | 1d | 2018-11-30 A | 2018-11-30 A | 45 | 100% |  |  |  |  | 庄 | 1h | 1h | 庄毓勋 | 修改WBS图 | WBSV0.1.0 | WBSV0.1.1 |
| 83 | 1.3.29 | 更新OBS图 | manual | 0.5d | 2018-11-30 A | 2018-11-30 A | 44 | 100% |  |  |  |  | 庄 | 1h | 1h | 庄毓勋 | 修改OBS图 | OBS图V0.1.0 | OBS图V0.1.1 |
| 84 | 1.3.30 | 更新风险管理计划 | manual | 0.67d | 2018-10-18 A | 2018-10-18 A | 53 | 100% |  |  |  |  | 庄 | 2h | 2h | 庄毓勋 | 添加AB角色，风险触发条件 | 风险管理计划 | 风险管理计划 |
| 85 | 1.3.31 | 更新可行性分析报告 | manual | 0.5d | 2018-12-01 A | 2018-12-01 A | 84, 75 | 100% |  |  |  |  | 庄 | 1h | 1h | 庄毓勋 | 修改风险，修改模板等。 | 可行性报告V0.1.4 | 可行性报告V0.2.1 |
| 86 | 1.3.32 | 修改里程碑 | manual | 1d | 2018-11-22 | 2018-11-22 | 73 |  |  |  |  |  | 庄 | 1h |  | 庄毓勋 | 修改为最新的杨枨老师要求里程碑 | 里程碑 | 里程碑 |
| 87 | 1.3.33 | 更新项目章程 | manual | 1d | 2018-12-01 A | 2018-12-01 A | 73, 86 | 100% |  |  |  |  | 庄 | 1h | 1h | 庄毓勋 | 修改里程碑 | 项目章程V0.1.3 | 项目章程V0.1.4 |
| 88 | 1.3.34 | 更新需求工程计划 | manual | 0.5d | 2018-12-01 A | 2018-12-01 A | 80, 82, 83 | 100% |  |  |  |  | 庄 | 1h | 1h | 庄毓勋 | WBS图、OBS图、输入输出删除后还未添加 | 需求开发计划V0.3.1 | 需求开发计划V0.3.2 |
| 89 | 1.3.35 | 更新需求工程计划 | manual | 0.5d | 2018-12-02 A | 2018-12-02 A | 88, 83 | 100% |  |  |  |  | 庄 | 1h | 1h | 庄毓勋 | 增加WBS图、OBS图，还缺少甘特图 | 需求开发计划V0.3.2 | 需求开发计划V0.3.3 |
| 90 | 1.3.36 | 更新项目章程 | manual | 1d | 2018-12-03 A | 2018-12-03 A | 87 | 100% |  |  |  |  | 庄 | 1h | 1h | 庄毓勋 | 修改费用和内容 | 项目章程V0.1.4 | 项目章程V0.2.1 |
| 91 | 1.3.37 | 更新开发计划书 | manual | 1d | 2018-12-03 A | 2018-12-03 A | 78, 73 | 100% |  |  |  |  | 庄 | 1h | 1h | 庄毓勋 | 修改模板、修改内容 | 项目开发计划书V0.2.3 | 项目开发计划书V0.2.4 |
| 92 | 1.3.38 | 更新需求工程计划 | manual | 0.5d | 2018-12-03 A | 2018-12-03 A | 89, 82 | 100% |  |  |  |  | 庄 | 1h | 1h | 庄毓勋 | 修改WBS内输入输出 | 需求开发计划V0.3.3 | 需求开发计划V0.3.4 |
| 93 | 1.3.39 | 更新需求工程计划 | manual | 0.5d | 2018-12-04 A | 2018-12-04 A | 92, 82 | 100% |  |  |  |  | 庄 | 1h | 1h | 庄毓勋 | 完善WBS的输入输出 | 需求开发计划V0.3.4 | 需求开发计划V0.4.1 |
| 94 | 1.3.40 | 更新需求工程计划 | manual | 2.5d | 2018-12-04 A | 2018-12-05 A | 93 | 100% |  |  |  |  | 邓 | 1h | 1h | 邓晰 | 修改页眉、完成日期等 | 需求开发计划V0.4.1 | 需求开发计划V0.4.2 |
| 95 | 1.3.41 | 更新可行性分析报告 | manual | 1d | 2018-12-05 A | 2018-12-05 A | 85 | 100% |  |  |  |  | 庄 | 2h | 2h | 庄毓勋 | 修改背景 | 可行性报告V0.2.1 | 可行性报告V0.2.2 |
| 96 | 1.3.42 | 更新项目章程 | manual | 1d | 2018-12-05 A | 2018-12-05 A | 90, 86 | 100% |  |  |  |  | 庄 | 1h | 1h | 庄毓勋 | 修改里程碑 | 项目章程V0.2.1 | 项目章程V0.2.2 |
| 97 | 1.3.43 | 项目章程 | milestone, manual | 0.5d | 2018-12-05 A | 2018-12-05 A | 96 | 100% |  |  |  |  | 庄 | 1h | 1h | 庄毓勋 | 修改背景内容 | 项目章程V0.2.2 | 项目章程V0.2.3 |

| ID | WBS | Task | Type | Duration | Start | Finish | Predecessors | Complete | Remaining | Total slack | Resources | Work | Actual work | 负责人 | 说明 | 输入 | 输出 |
| --- | --- | --- | --- | --- | --- | --- | --- | --- | --- | --- | --- | --- | --- | --- | --- | --- | --- |
| 98 | 1.3.44 | 更新需求工程计划 | manual | 0.5d | 2018-12-05 A | 2018-12-05 A | 94, 86 | 100% |  |  | 庄 | 1h | 1h | 庄毓勋 | 修改里程碑和上交文件、修改WBS图 | 需求开发计划V0.4.2 | 需求开发计划V0.4.3 |
| 99 | 1.3.45 | 更新需求工程计划 | manual | 0.5d | 2018-12-05 A | 2018-12-05 A | 98 | 100% |  |  | 庄 | 1h | 1h | 庄毓勋 | 修改背景内容 | 需求开发计划V0.4.3 | 需求开发计划V0.4.4 |
| 100 | 1.3.46 | 更新需求工程计划 | manual | 0.5d | 2018-12-05 A | 2018-12-05 A | 99 | 100% |  |  | 庄 | 1h | 1h | 庄毓勋 | 删除重复内容 | 需求开发计划V0.4.4 | 需求开发计划V0.5.1 |
| 101 | 1.3.47 | 更新开发计划书 | manual | 0.5d | 2018-12-05 A | 2018-12-05 A | 91, 86 | 100% |  |  | 庄 | 1h | 1h | 庄毓勋 | 修改里程碑 | 项目开发计划书V0.2.4 | 项目开发计划书V0.3.0 |
| 102 | 1.3.48 | 更新开发计划书 | manual | 1d | 2018-12-05 A | 2018-12-05 A | 101 | 100% |  |  | 庄 | 2h | 2h | 庄毓勋 | 修改背景 | 项目开发计划书V0.3.0 | 项目开发计划书V0.3.1 |
| 103 | 1.3.49 | 更新需求工程计划 | manual | 0.5d | 2018-12-06 A | 2018-12-06 A | 100, 52 | 100% |  |  | 庄 | 1h | 1h | 庄毓勋 | 修改干系人列表（添加杨老师为客户代表），修改配置管理计划（添加最新目录结构的描述） | 需求开发计划V0.5.1 | 需求开发计划V0.5.2 |
| 104 | 1.3.50 | 更新可行性分析报告 | milestone, manual | 0.5d | 2018-12-06 A | 2018-12-06 A | 95, 34 | 100% |  |  | 诸葛; 庄 | 1h | 1h | 诸葛志相 | 修改客户代表，修改SWOT | 可行性报告V0.2.2 | 可行性报告V0.2.3 |
| 105 | 1.3.51 | 更新开发计划书 | milestone, manual | 1d | 2018-12-06 A | 2018-12-06 A | 102 | 100% |  |  | 庄 | 1h | 1h | 庄毓勋 | 修改模板描述 | 项目开发计划书V0.3.0 | 项目开发计划书V0.3.2 |
| 106 | 1.3.52 | 甘特图修订 | manual | 1d | 2018-12-07 A | 2018-12-07 A | 42 | 100% |  |  | 庄 | 7h | 7h | 庄毓勋 | 修改甘特图 | 甘特图V0.1.0 | 甘特图V0.1.1 |
| 107 | 1.3.53 | 可行性分分析报告 | milestone, manual | 1d | 2018-12-07 A | 2018-12-07 A | 104 | 100% |  |  | 诸葛 | 1h | 1h | 诸葛志相 | 修改背景错别字 | 可行性报告V0.2.3 | 可行性报告V0.2.4 |
| 108 | 1.3.54 | 项目总体计划书 | milestone, manual | 1d | 2018-12-07 A | 2018-12-08 A | 105 | 100% |  |  | 陈 | 15h | 15h | 陈伟峰 | 修改背景，修改错别字，修改沟通计划 | 项目总体计划书V0.3.2 | 项目总体计划V0.3.3 |
| 109 | 1.3.55 | 更新愿景和范围文档 | manual | 1d | 2018-12-09 A | 2018-12-09 A |  | 100% |  |  | 庄 | 1h | 1h | 庄毓勋 | 修改背景，上下问题，具体描述等。 | 愿景和范围文档V0.1.2 | 愿景和范围文档V0.1.3 |
| 110 | 1.3.56 | 需求工程计划 | milestone, manual | 1d | 2018-12-07 A | 2018-12-07 A | 103 | 100% |  |  | 程 | 1h | 1h | 程天柯 | 修改一些细节，背景描述，沟通计划。 | 需求工程计划V0.5.2 | 需求工程计划V0.5.3 |
| 111 | 1.4 | **项目执行** |  | 89.25d? | 2018-11-28 A | 2019-01-13 | 38 | 41% | 52.22d? | 0d |  | 201h | 45h |  |  |  |  |
| 112 | 1.4.1 | **需求开发** |  | 89.25d? | 2018-11-28 A | 2019-01-13 |  | 42% | 52.05d? | 0d |  | 196h | 45h |  |  |  |  |
| 113 | 1.4.1.1 | **需求获取** |  | 19d | 2018-11-28 A | 2018-12-08 |  | 71% | 5.47d | 0d |  | 82h | 45h |  |  |  |  |
| 114 | 1.4.1.1.1 | 范围和愿景文档 | manual | 8d | 2018-11-28 A | 2018-11-29 A | 97, 105, 104, 100 | 100% |  |  | 庄 | 4h | 4h | 庄毓勋 | 初稿 | 看需求工程相关书籍 | 愿景和范围文档V0.1.0 |
| 115 | 1.4.1.1.2 | 初步绘制低保真界面原型（网站） | manual | 13d | 2018-11-28 A | 2018-12-04 A | 114 | 100% |  |  | 陈; 邓 | 12h | 12h | 邓晰 | 初步画出低保真网站界面原型 | 大量网站素材 | 初步低保真界面原型（网站） |
| 116 | 1.4.1.1.3 | 初步绘低保真证界面原型（APP） | manual | 20.5d | 2018-11-28 A | 2018-12-05 A | 114 | 100% |  |  | 程; 诸葛 | 12h | 12h | 诸葛志相 | 初步画出低保真APP界面原型 | 大量app素材 | 初步低保真界面原型（app） |
| 117 | 1.4.1.1.4 | 用户群分类 | manual | 3d | 2018-11-30 | 2018-12-02 | 114 |  |  |  | 邓 | 5h |  |  |  |  |  |
| 118 | 1.4.1.1.5 | 确定开发过程 | manual | 3d | 2018-12-02 | 2018-12-04 | 114, 117 |  |  |  | 程 | 5h |  |  |  |  |  |
| 119 | 1.4.1.1.6 | 选择产品代表 | manual | 3d | 2018-12-02 | 2018-12-04 | 114, 117 |  |  |  | 邓 | 5h |  |  |  |  |  |
| 120 | 1.4.1.1.7 | 建立核心队伍 | manual | 3d | 2018-12-05 | 2018-12-06 | 114, 117, 119 |  |  |  | 诸葛 | 5h |  |  |  |  |  |
| 121 | 1.4.1.1.8 | 确定使用实例 | manual | 3d | 2018-12-05 | 2018-12-06 | 114, 118 |  |  |  | 程 | 5h |  |  |  |  |  |
| 122 | 1.4.1.1.9 | 修改绘制APP原型低保真 | manual | 3d | 2018-12-01 | 2018-12-02 | 116 |  |  |  | 程; 诸葛 | 12h |  |  |  |  |  |
| 123 | 1.4.1.1.10 | 更新愿景和范围文档 | manual | 1d | 2018-12-05 A | 2018-12-05 A | 115 | 100% |  |  | 庄 | 1h | 1h | 庄毓勋 | 干系人同步 | 愿景和范围文档V0.1.0 | 愿景和范围文档V0.1.1 |
| 124 | 1.4.1.1.11 | 更新愿景和范围文档 | manual | 1d | 2018-12-06 A | 2018-12-06 A | 123 | 100% |  |  | 庄 | 1h | 1h | 庄毓勋 | 修改特性 | 愿景和范围文档V0.1.1 | 愿景和范围文档V0.1.2 |
| 125 | 1.4.1.1.12 | 更新愿景和范围文档 | manual | 1d | 2018-12-07 A | 2018-12-08 A | 124 | 100% |  |  | 庄 | 15h | 15h | 庄毓勋 | 修改背景，上下问题，具体描述等。 | 愿景和范围文档V0.1.2 | 愿景和范围文档V0.1.3 |
| 126 | 1.4.1.2 | 需求分析 | manual | 0.5d? | 2018-12-06 | 2018-12-06 | 113 |  |  |  | 庄; 陈; 程; 邓; 诸葛 | 5h |  |  |  |  |  |
| 127 | 1.4.1.3 | 需求规格说明 | milestone, manual | 14.25d | 2018-12-21 | 2018-12-28 | 126 |  |  |  | 陈; 程; 邓; 诸葛; 庄 | 45h |  |  |  |  |  |
| 128 | 1.4.1.4 | 需求规格审核 | manual | 29.5d | 2018-12-29 | 2019-01-13 | 127, 129 |  |  |  | 陈; 邓; 诸葛; 庄 | 64h |  |  |  |  |  |
| 129 | 1.4.2 | 需求管理 | manual | 0.5d? | 2018-12-06 | 2018-12-06 | 113 |  |  |  | 陈; 程; 邓; 诸葛; 庄 | 5h |  |  |  |  |  |

| ID | WBS | Task | Type | Duration | Start | Finish | Predecessors | Complete | Remaining | Constraint | Resources | Work | Actual work | 负责人 | 输入 | 输出 |
| --- | --- | --- | --- | --- | --- | --- | --- | --- | --- | --- | --- | --- | --- | --- | --- | --- |
| 130 | 1.5 | **项目监控** |  | 197.25d | 2018-09-25 A | 2019-01-12 | 23 | 96% | 8.02d |  |  | 51h | 50h |  |  |  |
| 131 | 1.5.1 | 会议模板初版 | manual | 1d | 2018-09-25 A | 2018-09-25 A |  | 100% |  |  | 陈 | 5h | 5h | 陈伟峰 | 会议记录找模板 | PRD2018-G14-会议记录模板 |
| 132 | 1.5.2 | 第一次小组会议 | manual | 1d | 2018-09-25 A | 2018-09-25 A | 131, 143, 159 | 100% |  |  | 陈; 程; 邓; 诸葛; 庄 | 1.5h | 1.5h | 陈伟峰 | 第一次小组会议 | PRD2018-G14-0925会议记录 |
| 133 | 1.5.3 | 第二次小组会议 | manual | 1d | 2018-09-29 A | 2018-09-29 A | 132 | 100% |  |  | 陈; 程; 邓; 诸葛; 庄 | 1.5h | 1.5h | 陈伟峰 | 第二次小组会议 | PRD2018-G14-0929会议记录 |
| 134 | 1.5.4 | 第一周绩效考评 | manual | 1d | 2018-09-29 A | 2018-09-29 A | 133 | 100% |  |  | 陈; 程; 邓; 诸葛; 庄 | 1.5h | 1.5h | 陈伟峰 | 第一周绩效考评 | 20180925评分 |
| 135 | 1.5.5 | 第三次小组会议 | manual | 0.1d | 2018-10-10 A | 2018-10-10 A | 133, 134 | 100% |  |  | 陈; 程; 邓; 诸葛; 庄 | 1.5h | 1.5h | 陈伟峰 | 第三次小组会议 | PRD2018-G14-1010会议记录 |
| 136 | 1.5.6 | 第二周绩效考评 | manual | 1d | 2018-10-10 A | 2018-10-10 A | 135 | 100% |  |  | 陈; 程; 邓; 诸葛; 庄 | 1.5h | 1.5h | 陈伟峰 | 第二周绩效考评 | 20181007评分 |
| 137 | 1.5.7 | 第四次小组会议 | manual | 1d | 2018-10-17 A | 2018-10-17 A | 135, 136 | 100% |  |  | 陈; 程; 邓; 诸葛; 庄 | 1h | 1h | 陈伟峰 | 第四次小组会议 | PRD2018-G14-1017会议记录 |
| 138 | 1.5.8 | 第三周绩效考评 | manual | 1d | 2018-10-17 A | 2018-10-17 A | 137 | 100% |  | start no earlier than 2018-10-17 | 陈; 程; 邓; 诸葛; 庄 | 1h | 1h | 陈伟峰 | 第三周绩效考评 | 20181010评分 |
| 139 | 1.5.9 | 与杨枨老师进行非正式访谈 | manual | 0.1d | 2018-10-21 A | 2018-10-21 A | 137 | 100% |  |  | 陈; 程; 邓; 诸葛; 庄 | 1h | 1h | 陈伟峰 | 与杨枨老师进行非正式访谈 | PRD2018-G14-1021访谈记录 |
| 140 | 1.5.10 | 第一次临时会议 | manual | 0.1d | 2018-10-21 A | 2018-10-21 A | 139 | 100% |  |  | 陈; 程; 邓; 诸葛; 庄 | 1h | 1h | 陈伟峰 | 第一次临时会议 | PRD2018-G14-1021临时会议 |
| 141 | 1.5.11 | 第五次小组会议 | manual | 0.1d | 2018-10-25 A | 2018-10-25 A | 137, 138 | 100% |  |  | 陈; 程; 邓; 诸葛; 庄 | 1h | 1h | 陈伟峰 | 第五次小组会议 | PRD2018-G14-1025会议记录 |
| 142 | 1.5.12 | 第四周绩效考评 | manual | 0.1d | 2018-10-25 A | 2018-10-25 A | 141 | 100% |  |  | 陈; 程; 邓; 诸葛; 庄 | 1h | 1h | 陈伟峰 | 第四周绩效考评 | 20181014评分 |
| 143 | 1.5.13 | 会议模板修改 | manual | 1d | 2018-09-26 A | 2018-09-26 A | 131 | 100% |  |  | 陈 | 7h | 7h | 陈伟峰 | PRD2018-G14-会议记录模板 | PRD2018-G14-会议记录模板 |
| 144 | 1.5.14 | 第六次小组会议 | manual | 1d | 2018-10-31 A | 2018-10-31 A | 141, 142, 131 | 100% |  |  | 陈; 程; 邓; 诸葛; 庄 | 1h | 1h | 陈伟峰 | 第六次小组会议 | PRD2018-G14-1031会议记录 |
| 145 | 1.5.15 | 第五周绩效考评 | manual | 0.1d | 2018-11-01 A | 2018-11-01 A | 144 | 100% |  |  | 陈; 程; 邓; 诸葛; 庄 | 1h | 1h | 陈伟峰 | 第五周绩效考评 | 20181021评分 |
| 146 | 1.5.16 | 第七次小组会议 | manual | 1d | 2018-11-07 A | 2018-11-07 A | 144, 145 | 100% |  |  | 陈; 程; 邓; 诸葛; 庄 | 1h | 1h | 陈伟峰 | 第七次小组会议 | PRD2018-G14-1107会议记录 |
| 147 | 1.5.17 | 第六周绩效考评 | manual | 1d | 2018-11-07 A | 2018-11-07 A | 146 | 100% |  |  | 陈; 程; 邓; 诸葛; 庄 | 1h | 1h | 陈伟峰 | 第六周绩效考评 | 20181028评分 |
| 148 | 1.5.18 | 第八次小组会议 | manual | 1d | 2018-11-14 A | 2018-11-14 A | 146, 147 | 100% |  |  | 陈; 程; 邓; 诸葛; 庄 | 1.5h | 1.5h | 陈伟峰 | 第八次小组会议 | PRD2018-G14-1114会议记录 |
| 149 | 1.5.19 | 第七周绩效考评 | manual | 1d | 2018-11-14 A | 2018-11-14 A | 148 | 100% |  |  | 陈; 程; 邓; 诸葛; 庄 | 1.5h | 1.5h | 陈伟峰 | 第七周绩效考评 | 20181104评分 |
| 150 | 1.5.20 | 第九次小组会议 | manual | 1d | 2018-11-21 A | 2018-11-21 A | 148, 149 | 100% |  |  | 陈; 程; 邓; 诸葛; 庄 | 1.5h | 1.5h | 陈伟峰 | 第九次小组会议 | PRD2018-G14-1121会议记录 |
| 151 | 1.5.21 | 第八周绩效考评 | manual | 1d | 2018-11-21 A | 2018-11-21 A | 150 | 100% |  |  | 陈; 程; 邓; 诸葛; 庄 | 1.5h | 1.5h | 陈伟峰 | 第八周绩效考评 | 20181111评分 |
| 152 | 1.5.22 | 第十次小组会议 | manual | 1d | 2018-11-28 A | 2018-11-28 A | 150, 151 | 100% |  |  | 陈; 程; 邓; 诸葛; 庄 | 1.5h | 1.5h | 陈伟峰 | 第十次小组会议 | PRD2018-G14-1128会议记录 |
| 153 | 1.5.23 | 第九周绩效考评 | manual | 1d | 2018-11-28 A | 2018-11-28 A | 152 | 100% |  |  | 陈; 程; 邓; 诸葛; 庄 | 1.5h | 1.5h | 陈伟峰 | 第九周绩效考评 | 20181118评分 |
| 154 | 1.5.24 | 第一次里程碑评审 | manual | 1d | 2018-11-30 A | 2018-11-30 A |  | 100% |  |  | 陈; 程; 邓; 诸葛; 庄 | 1h | 1h | 陈伟峰 | PRD2018-G14-需求工程计划评审 |  |
| 155 | 1.5.25 | 第二次临时会议 | manual | 1d | 2018-11-30 A | 2018-11-30 A | 154, 140 | 100% |  |  | 陈; 程; 邓; 诸葛; 庄 | 1.5h | 1.5h | 陈伟峰 | 第二次临时会议 | PRD2018-G14-1130临时会议 |
| 156 | 1.5.26 | 第十一次小组会议 | manual | 1d | 2018-12-05 A | 2018-12-05 A | 152, 153 | 100% |  |  | 陈; 程; 邓; 诸葛; 庄 | 1.5h | 1.5h | 陈伟峰 | 第十一次小组会议 | PRD2018-G14-1205会议记录 |
| 157 | 1.5.27 | 第十周绩效考评 | manual | 1d | 2018-12-05 A | 2018-12-05 A | 156 | 100% |  |  | 陈; 程; 邓; 诸葛; 庄 | 1.5h | 1.5h | 陈伟峰 | 第十周绩效考评 | 20181125评分 |
| 158 | 1.5.28 | 与杨枨老师进行非正式访谈 | manual | 1d | 2018-12-05 A | 2018-12-05 A | 139, 156 | 100% |  |  | 陈; 程; 邓; 诸葛; 庄 | 1h | 1h | 陈伟峰 | 与杨枨老师进行非正式访谈 |  |
| 159 | 1.5.29 | 会议模板第三次 | manual | 1d | 2018-12-06 A | 2018-12-06 A | 143 | 100% |  |  | 陈 | 5h | 5h | 陈伟峰 | PRD2018-G14-会议记录模板 | PRD2018-G14-会议记录模板 |
| 160 | 1.5.30 | 第十二次小组会议 | manual | 1d | 2018-12-07 | 2018-12-07 | 156, 159 |  |  |  | 陈; 程; 邓; 诸葛; 庄 | 1h |  | 陈伟峰 |  |  |

| ID | WBS | Task | Type | Duration | Start | Finish | Predecessors | Total slack | Resources | Work | 负责人 | 说明 | 输入 | 输出 |
| --- | --- | --- | --- | --- | --- | --- | --- | --- | --- | --- | --- | --- | --- | --- |
| 161 | 1.6 | **项目收尾** |  | 9.75d | 2019-01-08 | 2019-01-12 | 111, 130 | 0d |  | 107.5h |  |  |  |  |
| 162 | 1.6.1 | 项目总结 | manual | 2d | 2019-01-08 | 2019-01-08 |  |  | 陈; 程; 邓; 诸葛; 庄 | 20h | 庄毓勋 | 项目最终阶段的总结计划 | 需提交的文件 | 项目总结 |
| 163 | 1.6.2 | 制作最终PPT | manual | 2d | 2019-01-09 | 2019-01-10 | 162 |  | 陈; 程; 邓; 诸葛; 庄 | 57.5h | 庄毓勋 | 制作最终评审PPT | 项目总结 | 评审最终PPT |
| 164 | 1.6.3 | 答辩 | manual | 1d | 2019-01-10 | 2019-01-10 | 163, 162 |  | 陈; 程; 邓; 诸葛; 庄 | 10h | 最终答辩 | 使用最终PPT答辩 | 评审最终PPT |  |
| 165 | 1.6.4 | 配置管理系统信息提交 | manual | 1d | 2019-01-11 | 2019-01-11 | 164, 162 |  | 陈; 程; 邓; 诸葛; 庄 | 10h | 邓晰 |  |  | 配置管理系统信息提交 |
| 166 | 1.6.5 | 散伙饭 | manual | 1d | 2019-01-12 | 2019-01-12 | 165, 164 |  | 陈; 程; 邓; 诸葛; 庄 | 10h | 诸葛志相 | 散伙饭 |  | teambuilding |
